# galvanica

Schedule from MS Project XML, 2016-10-20 to 2017-06-04, 4 hours a day, A marks actual dates.

## Calendars

- micalendario: Mon 07:00-09:00, 19:00-22:00; Tue 07:00-09:00; Wed 07:00-09:00, 19:00-22:00; Thu 07:00-09:00; Fri 07:00-09:00, 19:00-22:00; Sat-Sun 15:00-22:00. Exceptions (off unless hours are given): 2016-11-23 07:00-09:00 (Day), 2016-12-17 to 2017-01-03 (Day).

## Schedule

| ID | WBS | Task | Duration | Start | Finish | Predecessors | Remaining | Baseline 1 start | Baseline 1 finish | Total slack |
| --- | --- | --- | --- | --- | --- | --- | --- | --- | --- | --- |
| 1 | 1 | **Gestión de Proyecto** | 80h? | 2016-10-20 A | 2016-11-06 |  | 80h? | 2016-10-20 | 2016-11-06 | 0d |
| 2 | 1.1 | Planificación | 40h? | 2016-10-20 A | 2016-10-29 |  | 40h? | 2016-10-20 | 2016-10-29 | 0d |
| 3 | 1.2 | Análisis del proyecto | 40h? | 2016-10-29 A | 2016-11-06 | 2 | 40h? | 2016-10-29 | 2016-11-06 | 0d |
| 4 | 2 | **Definición del banco de pruebas** | 40d? | 2016-11-06 A | 2016-12-10 | 1 | 40d? | 2016-11-06 | 2016-12-02 | 0d |
| 5 | 2.1 | Diagrama en bloques | 35h? | 2016-11-06 A | 2016-11-13 |  | 35h? | 2016-11-06 | 2016-11-09 | 0d |
| 6 | 2.2 | Diseñar el circuito electrónico para placa base | 40h? | 2016-11-13 A | 2016-11-21 | 5 | 40h? | 2016-11-09 | 2016-11-18 | 0d |
| 7 | 2.3 | Verificación del circuito. | 20h? | 2016-11-21 A | 2016-11-26 | 6 | 20h? | 2016-11-18 | 2016-11-19 | 0d |
| 8 | 2.4 | Elaboración del PCB. | 45h? | 2016-11-27 A | 2016-12-05 | 7 | 45h? | 2016-11-20 | 2016-11-27 | 0d |
| 9 | 2.5 | Soldado y verificación de la placa | 20h? | 2016-12-06 A | 2016-12-10 | 8 | 20h? | 2016-11-27 | 2016-12-02 | 0d |
| 10 | 3 | **Integración con la baseboard** | 25d? | 2016-11-27 A | 2017-01-06 | 7 | 25d? | 2016-11-20 | 2016-12-05 | 0d |
| 11 | 3.1 | Diagrama en bloques de software de testeo | 30h? | 2016-11-27 A | 2016-12-03 |  | 30h? | 2016-11-20 | 2016-11-23 | 0d |
| 12 | 3.2 | Programación de los bloques | 50h? | 2016-12-03 A | 2016-12-13 | 11 | 50h? | 2016-11-23 | 2016-12-04 | 0d |
| 13 | 3.3 | Verificación del correcto funcionamiento | 20h? | 2016-12-14 A | 2017-01-06 | 12 | 20h? | 2016-12-04 | 2016-12-05 | 0d |
| 14 | 4 | **Firmware Sensores y Actuadores** | 90d? | 2017-01-06 A | 2017-03-22 | 13, 32 | 90d? | 2016-12-06 | 2017-03-06 | 0d |
| 15 | 4.1 | Definición de arquitectura | 40h | 2017-01-06 A | 2017-01-14 |  | 40h | 2016-12-07 | 2016-12-12 | 0d |
| 16 | 4.2 | Definición de interfaces | 20h? | 2017-01-14 A | 2017-01-18 | 15 | 20h? | 2016-12-12 | 2016-12-14 | 0d |
| 17 | 4.3 | Programación de funciones p/sensores | 100h? | 2017-01-18 A | 2017-02-08 | 16 | 100h? | 2017-01-04 | 2017-01-21 | 0d |
| 18 | 4.4 | Programación de funciones p/actuadores | 100h? | 2017-02-08 A | 2017-03-01 | 17 | 100h? | 2017-01-21 | 2017-01-29 | 0d |
| 19 | 4.5 | Programación de funciones de prueba | 60h | 2017-03-01 A | 2017-03-13 | 18 | 60h | 2017-02-15 | 2017-02-26 | 0d |
| 20 | 4.6 | Documentación del firmware | 40h? | 2017-03-14 A | 2017-03-22 | 19 | 40h? | 2017-02-26 | 2017-03-06 | 0d |
| 21 | 5 | **Firmware Interfaces** | 45d? | 2017-03-23 A | 2017-04-30 | 20 | 45d? | 2017-03-06 | 2017-04-22 | 0d |
| 22 | 5.1 | Definición de la Arquitectura | 20h? | 2017-03-23 A | 2017-03-26 | 19 | 20h? | 2017-03-06 | 2017-03-08 | 0d |
| 23 | 5.2 | Diseño de la interfaz | 20h? | 2017-03-26 A | 2017-03-31 | 22 | 20h? | 2017-03-11 | 2017-03-15 | 0d |
| 24 | 5.3 | Programación de la interfaz | 80h? | 2017-04-01 A | 2017-04-16 | 23 | 80h? | 2017-03-15 | 2017-04-01 | 0d |
| 25 | 5.4 | Programación de funciones p/ethernet | 60h? | 2017-04-17 A | 2017-04-30 | 24 | 60h? |  |  | 0d |

| ID | WBS | Task | Type | Duration | Start | Finish | Predecessors | Remaining | Baseline 1 start | Baseline 1 finish | Total slack | Constraint |
| --- | --- | --- | --- | --- | --- | --- | --- | --- | --- | --- | --- | --- |
| 26 | 6 | **Cierre** |  | 42.5d? | 2017-04-30 A | 2017-06-04 |  | 42.5d? | 2017-04-17 | 2017-06-03 | 0d |  |
| 27 | 6.1 | Pruebas de funcionamiento |  | 20h? | 2017-04-30 A | 2017-05-04 | 25 | 20h? | 2017-04-17 | 2017-04-21 | 0d |  |
| 28 | 6.2 | Verificación & Validación |  | 40h? | 2017-05-05 A | 2017-05-13 | 27 | 40h? | 2017-05-01 | 2017-05-10 | 0d |  |
| 29 | 6.3 | Manual de uso |  | 20h? | 2017-05-13 A | 2017-05-17 | 28 | 20h? | 2017-05-10 | 2017-05-14 | 0d |  |
| 30 | 6.4 | Memoria del Trabajo |  | 60h? | 2017-05-17 A | 2017-05-29 | 29 | 60h? | 2017-05-14 | 2017-05-25 | 0d |  |
| 31 | 6.5 | Presentación Final |  | 30h? | 2017-05-29 A | 2017-06-04 | 30 | 30h? | 2017-05-26 | 2017-06-03 | 0d |  |
| 32 | 7 | Receso por Vacaciones | milestone | 1.5d? | 2016-12-16 A | 2017-01-04 |  | 1.5d? | 2016-12-16 | 2017-01-04 | 0d | start no earlier than 2016-12-16 |
